# projeto controle de livraria

How a schedule from MS Project changed from version to version. A marks actual dates.

## Version 1 (saved 2020-06-05)

Note of the change: Added Crudboost with laravel

| ID | WBS | Task | Duration | Start | Finish | Predecessors | Total float |
| --- | --- | --- | --- | --- | --- | --- | --- |
| 1 | 1 | **Projeto Controle de Livraria** | 23.85d | 2020-06-05 15:00 | 2020-07-09 13:50 |  | 0d |
| 2 | 1.1 | **Prospecçâo** | 8.31d | 2020-06-05 15:00 | 2020-06-17 17:30 |  | 0d |
| 3 | 1.1.1 | **PTEC** | 3.31d | 2020-06-05 15:00 | 2020-06-10 17:30 |  | 0d |
| 4 |  | Estudar domínio de aplicação | 0.38d | 2020-06-05 15:00 | 2020-06-05 18:00 |  | 0d |
| 5 |  | Reunir-se com fornecedor de requisitos | 0.38d | 2020-06-08 09:00 | 2020-06-08 12:00 | 4 | 0d |
| 6 |  | Redigir PTEC | 0.62d | 2020-06-08 13:00 | 2020-06-10 11:00 | 5 | 0d |
| 7 |  | Revisar proposta técnica | 0.31d | 2020-06-10 11:00 | 2020-06-10 17:30 | 6 | 0d |
| 8 |  | Aprovar PTEC | 0d | 2020-06-10 17:30 | 2020-06-10 17:30 | 7 | 5d |
| 9 | 1.1.2 | **Estimativa de tamanho preliminar** | 3.81d | 2020-06-10 17:30 | 2020-06-16 16:00 |  | 0d |
| 10 |  | Estimar tamanho do projeto | 0.62d | 2020-06-10 17:30 | 2020-06-11 14:30 | 7 | 0d |
| 11 |  | Revisar estimativa do tamanho do projeto | 0.12d | 2020-06-11 14:30 | 2020-06-16 16:00 | 10 | 0d |
| 12 | 1.1.3 | **Estimativa preliminar de cronograma e orçcamento** | 1.19d | 2020-06-16 16:00 | 2020-06-17 17:30 |  | 0d |
| 13 |  | Elaborar cronograma e orçamento preliminares | 0.5d | 2020-06-16 16:00 | 2020-06-17 17:00 | 9 | 0d |
| 14 |  | Revisar cronograma e orçamento preliminares | 0.06d | 2020-06-17 17:00 | 2020-06-17 17:30 | 13 | 0d |
| 15 | 1.2 | **Análise** | 3.88d | 2020-06-17 17:30 | 2020-06-23 16:30 | 2 | 0d |
| 16 | 1.2.1 | **Documento de requisitos** | 3.88d | 2020-06-17 17:30 | 2020-06-23 16:30 |  | 0d |
| 17 |  | Reunir-se com o cliente | 0.38d | 2020-06-17 17:30 | 2020-06-18 11:30 |  | 0d |
| 18 |  | Elaborar documento de requisitos | 1.25d | 2020-06-18 11:30 | 2020-06-19 14:30 | 17 | 0d |
| 19 |  | Revisar documento de requisitos | 1d | 2020-06-22 16:30 | 2020-06-23 16:30 | 18 | 0d |
| 20 |  | Aprovar documento de requisitos | 0d | 2020-06-23 16:30 | 2020-06-23 16:30 | 19 | 0d |
| 21 | 1.2.2 | **MRB** | 3.12d | 2020-06-18 11:30 | 2020-06-23 13:30 |  | 0.38d |
| 22 |  | Elaborar MRB | 2.5d | 2020-06-18 11:30 | 2020-06-22 16:30 | 17 | 0.38d |
| 23 |  | Revisar MRB | 0.62d | 2020-06-22 16:30 | 2020-06-23 13:30 | 22 | 0.38d |
| 24 | 1.3 | **Projeto** | 0.84d | 2020-06-23 16:30 | 2020-06-24 15:15 | 15 | 0d |
| 25 | 1.3.1 | **Diagramas de classes** | 0.84d | 2020-06-23 16:30 | 2020-06-24 15:15 |  | 0d |
| 26 |  | Elaborar Diagrama de classes | 0.62d | 2020-06-23 16:30 | 2020-06-24 13:30 | 15 | 0d |
| 27 |  | Revisar Diagrama de classes | 0.19d | 2020-06-24 13:30 | 2020-06-24 15:15 | 26 | 0d |
| 28 |  | Atualizar MRB | 0.31d | 2020-06-23 16:30 | 2020-06-24 10:00 | 21 | 0.53d |
| 29 | 1.3.2 | **Modelo de entidade relacional** | 0.81d | 2020-06-23 16:30 | 2020-06-24 15:00 |  | 0.03d |
| 30 |  | Elaborar MER | 0.75d | 2020-06-23 16:30 | 2020-06-24 14:30 | 15 | 0.03d |
| 31 |  | Revisar MER | 0.06d | 2020-06-24 14:30 | 2020-06-24 15:00 | 30 | 0.03d |
| 32 | 1.4 | **Planejamento** | 2.88d | 2020-06-24 15:15 | 2020-06-29 14:15 | 24 | 0d |
| 33 |  | Divisão dos times de desenvolvimento | 0.5d | 2020-06-25 14:15 | 2020-06-26 09:15 | 24 | 1.5d |
| 34 |  | Definir linguagem/frameworks a serem utilizados | 1.38d | 2020-06-24 15:15 | 2020-06-26 13:15 | 24 | 0d |
| 35 | 1.4.3 | **Definir padrão de interface e usabilidade** | 1d | 2020-06-26 13:15 | 2020-06-29 13:15 |  | 0d |
| 36 |  | Montar Mockup de interface | 0.75d | 2020-06-26 13:15 | 2020-06-29 10:15 | 34 | 0d |
| 37 |  | Reunir-se com o cliente | 0.25d | 2020-06-29 10:15 | 2020-06-29 13:15 | 36 | 0d |
| 38 |  | Aprovar Interface | 0d | 2020-06-29 13:15 | 2020-06-29 13:15 | 37 | 0d |
| 39 |  | Iniciar repositório para controle de versionamento | 0.12d | 2020-06-29 13:15 | 2020-06-29 14:15 | 38 | 0d |
| 40 | 1.5 | **Desenvolvimento** | 7.95d | 2020-06-29 14:15 | 2020-07-09 13:50 | 32 | 0d |
| 41 | 1.5.1 | **Release 00** | 5.25d | 2020-06-29 14:15 | 2020-07-06 16:15 |  | 0d |
| 42 | 1.5.1.1 | **Implementação** | 4.75d | 2020-06-29 14:15 | 2020-07-06 11:15 |  | 0d |
| 43 |  | Implementar [RFS01] | 1.25d | 2020-06-29 14:15 | 2020-06-30 16:15 | 32 | 0.22d |
| 44 |  | Implementar [RFS02] | 0.75d | 2020-06-30 16:15 | 2020-07-01 14:15 | 43 | 2.12d |
| 45 |  | Implementar [RFS03] | 0.62d | 2020-06-30 16:15 | 2020-07-01 13:15 | 43 | 2.25d |
| 46 |  | Implementar [RFS04] | 0.5d | 2020-07-02 11:15 | 2020-07-03 10:15 | 43 | 0.5d |
| 47 |  | Implementar [RFS05] | 1.25d | 2020-06-29 14:15 | 2020-06-30 16:15 | 32 | 2d |
| 48 |  | Implementar [RFS06] | 0.62d | 2020-06-30 16:15 | 2020-07-01 13:15 | 47 | 2.25d |
| 49 |  | Implementar [RFS07] | 0.62d | 2020-06-30 16:15 | 2020-07-01 13:15 | 47 | 2.25d |
| 50 |  | Implementar [RFS08] | 0.5d | 2020-06-30 16:15 | 2020-07-01 11:15 | 47 | 2.38d |
| 51 |  | Implementar [RFS09] | 1.25d | 2020-06-29 14:15 | 2020-06-30 16:15 | 32 | 0d |
| 52 |  | Implementar [RFS10] | 0.75d | 2020-06-30 16:15 | 2020-07-01 14:15 | 51 | 2.12d |
| 53 |  | Implementar [RFS11] | 0.62d | 2020-06-30 16:15 | 2020-07-01 13:15 | 51 | 2.25d |
| 54 |  | Implementar [RFS12] | 0.5d | 2020-06-30 16:15 | 2020-07-01 11:15 | 51 | 2.38d |
| 55 |  | Implementar [RFS13] | 1.25d | 2020-06-30 16:15 | 2020-07-02 09:15 | 43 | 0.97d |
| 56 |  | Implementar [RFS14] | 0.62d | 2020-07-02 09:15 | 2020-07-02 15:15 | 55 | 1d |
| 57 |  | Implementar [RFS15] | 0.62d | 2020-07-02 15:15 | 2020-07-03 11:15 | 55 | 0.38d |
| 58 |  | Implementar [RFS16] | 0.5d | 2020-07-02 09:15 | 2020-07-02 14:15 | 55 | 1.12d |
| 59 |  | Implementar [RFS17] | 1.5d | 2020-06-30 16:15 | 2020-07-02 11:15 | 43, 51 | 1.38d |
| 60 |  | Implementar [RFS18] | 1d | 2020-06-30 16:15 | 2020-07-01 16:15 | 43 | 1.88d |
| 61 |  | Implementar [RNF01] | 0.88d | 2020-06-30 16:15 | 2020-07-01 15:15 | 47, 51 | 2d |
| 62 |  | Implementar [RNF02] | 0.62d | 2020-07-03 15:15 | 2020-07-06 11:15 | 43, 44, 45, 46, 47, 48, 49, 50, 51, 52, 53, 54, 55, 56, 57, 58, 59, 60, 61, 63 | 0d |
| 63 |  | Implementar [RNF03] | 0.38d | 2020-07-03 11:15 | 2020-07-03 15:15 | 51 | 0d |
| 64 | 1.5.1.2 | **Teste** | 4d | 2020-06-30 16:15 | 2020-07-06 16:15 |  | 0d |
| 65 |  | Testar [RFS01] | 0.25d | 2020-06-30 16:15 | 2020-07-01 09:15 | 43 | 3.75d |
| 66 |  | Testar [RFS02] | 0.25d | 2020-07-03 15:15 | 2020-07-03 17:15 | 44 | 0.88d |
| 67 |  | Testar [RFS03] | 0.25d | 2020-07-01 13:15 | 2020-07-01 15:15 | 45 | 3.12d |
| 68 |  | Testar [RFS04] | 0.25d | 2020-07-03 10:15 | 2020-07-03 13:15 | 46 | 1.38d |
| 69 |  | Testar [RFS05] | 0.25d | 2020-07-03 10:15 | 2020-07-03 13:15 | 47 | 1.38d |
| 70 |  | Testar [RFS06] | 0.25d | 2020-07-01 13:15 | 2020-07-01 15:15 | 48 | 3.12d |

| ID | WBS | Task | Duration | Start | Finish | Predecessors | Total float |
| --- | --- | --- | --- | --- | --- | --- | --- |
| 71 |  | Testar [RFS07] | 0.25d | 2020-07-01 13:15 | 2020-07-01 15:15 | 49 | 3.12d |
| 72 |  | Testar [RFS08] | 0.25d | 2020-07-01 11:15 | 2020-07-01 14:15 | 50 | 3.25d |
| 73 |  | Testar [RFS09] | 0.25d | 2020-06-30 16:15 | 2020-07-01 09:15 | 51 | 3.75d |
| 74 |  | Testar [RFS10] | 0.25d | 2020-07-01 16:15 | 2020-07-02 09:15 | 52 | 2.75d |
| 75 |  | Testar [RFS11] | 0.25d | 2020-07-01 13:15 | 2020-07-01 15:15 | 53 | 3.12d |
| 76 |  | Testar [RFS12] | 0.25d | 2020-07-01 11:15 | 2020-07-01 14:15 | 54 | 3.25d |
| 77 |  | Testar [RFS13] | 0.25d | 2020-07-02 09:15 | 2020-07-02 11:15 | 55 | 2.5d |
| 78 |  | Testar [RFS14] | 0.25d | 2020-07-02 15:15 | 2020-07-02 17:15 | 56 | 1.88d |
| 79 |  | Testar [RFS15] | 0.25d | 2020-07-03 11:15 | 2020-07-03 14:15 | 57 | 1.25d |
| 80 |  | Testar [RFS16] | 0.25d | 2020-07-02 14:15 | 2020-07-03 15:15 | 58 | 1.12d |
| 81 |  | Testar [RFS17] | 0.25d | 2020-07-02 11:15 | 2020-07-02 14:15 | 59 | 2.25d |
| 82 |  | Testar [RFS18] | 0.25d | 2020-07-01 16:15 | 2020-07-02 09:15 | 60 | 2.75d |
| 83 |  | Testar [RNF01] | 0.5d | 2020-07-01 15:15 | 2020-07-02 10:15 | 61 | 2.62d |
| 84 |  | Testar [RNS02] | 0.5d | 2020-07-06 11:15 | 2020-07-06 16:15 | 62 | 0d |
| 85 |  | Testar [RNF03] | 0.38d | 2020-07-03 15:15 | 2020-07-06 09:15 | 63 | 0.75d |
| 86 |  | Avaliação do cliente | 0d | 2020-07-06 16:15 | 2020-07-06 16:15 | 64 | 0d |
| 87 |  | Redigir relatório de não-conformidade | 0.42d | 2020-07-06 16:15 | 2020-07-09 13:50 | 86 | 0d |
| 88 | 1.5.4 | **Release 01** | 2.5d | 2020-07-06 16:15 | 2020-07-09 11:15 |  | 0.2d |
| 89 | 1.5.4.1 | **Implementação** | 2.08d | 2020-07-06 16:15 | 2020-07-08 16:55 |  | 0.2d |
| 90 |  | Correção de bugs de acordo com o relatório de não conformidade da Release 00 | 2.08d | 2020-07-06 16:15 | 2020-07-08 16:55 | 41 | 0.2d |
| 91 | 1.5.4.2 | **Teste** | 0.42d | 2020-07-08 16:55 | 2020-07-09 11:15 |  | 0.2d |
| 92 |  | Validação da correção dos bugs | 0.42d | 2020-07-08 16:55 | 2020-07-09 11:15 | 90 | 0.2d |
| 93 | 1.6 | **Monitoramento e controle** | 1.25d | 2020-06-24 15:15 | 2020-06-25 17:15 | 2, 15, 24 | 3.57d |
| 94 |  | Acompanhamento do projeto | 0.38d | 2020-06-24 15:15 | 2020-06-25 09:15 |  | 4.45d |
| 95 |  | Atualizações de bibliotecas utilizadas e protocolos | 0.88d | 2020-06-24 15:15 | 2020-06-25 14:15 |  | 3.95d |
| 96 |  | Elucidar requisitos demandados pelo cliente em relases | 0.62d | 2020-06-24 15:15 | 2020-06-25 11:15 |  | 4.2d |
| 97 |  | Refatoração de código | 1.25d | 2020-06-24 15:15 | 2020-06-25 17:15 |  | 3.57d |
| 98 |  | Fechamento | 2d | 2020-06-25 17:15 | 2020-06-29 17:15 | 93 | 3.57d |
| 99 |  | Controle de mudanças | 4d | 2020-06-29 17:15 | 2020-07-03 17:15 | 98 | 3.57d |

## Version 2 (saved 2020-06-26)

Note of the change: Cronograma atualizado

Last finish 2020-07-09 → 2020-07-03 (-6d).

Changed:

| ID | Task | Start | Finish | Duration | Total float | Other |
| --- | --- | --- | --- | --- | --- | --- |
| 1 | **Projeto Controle de Livraria** | 2020-06-05 15:00 → 2020-06-04 09:00 (-1d) | 2020-07-09 13:50 → 2020-07-03 15:35 (-6d) | 23.85d → 21.7d |  |  |
| 2 | **Prospecçâo** | 2020-06-05 15:00 → 2020-06-04 09:00 (-1d) | 2020-06-17 17:30 → 2020-06-08 16:30 (-9d) | 8.31d → 2.81d |  |  |
| 3 | **PTEC** | 2020-06-05 15:00 → 2020-06-04 09:00 (-1d) | 2020-06-10 17:30 → 2020-06-05 14:30 (-5d) | 3.31d → 1.56d |  |  |
| 4 | Estudar domínio de aplicação | 2020-06-05 15:00 → 2020-06-04 09:00 (-1d) | 2020-06-05 18:00 → 2020-06-04 12:00 (-1d) |  |  |  |
| 5 | Reunir-se com fornecedor de requisitos | 2020-06-08 09:00 → 2020-06-04 13:00 (-4d) | 2020-06-08 12:00 → 2020-06-04 16:00 (-4d) |  |  |  |
| 6 | Redigir PTEC | 2020-06-08 13:00 → 2020-06-04 16:00 (-4d) | 2020-06-10 11:00 → 2020-06-05 12:00 (-5d) |  |  |  |
| 7 | Revisar proposta técnica | 2020-06-10 11:00 → 2020-06-05 13:00 (-5d) | 2020-06-10 17:30 → 2020-06-05 14:30 (-5d) | 0.31d → 0.19d |  |  |
| 8 | Aprovar PTEC | 2020-06-10 17:30 → 2020-06-05 14:30 (-5d) | 2020-06-10 17:30 → 2020-06-05 14:30 (-5d) |  | 5d → 1.25d |  |
| 9 | **Estimativa de tamanho preliminar** | 2020-06-10 17:30 → 2020-06-05 14:30 (-5d) | 2020-06-16 16:00 → 2020-06-08 11:00 (-8d) | 3.81d → 0.69d |  |  |
| 10 | Estimar tamanho do projeto | 2020-06-10 17:30 → 2020-06-05 14:30 (-5d) | 2020-06-11 14:30 → 2020-06-08 10:30 (-3d) |  |  |  |
| 11 | Revisar estimativa do tamanho do projeto | 2020-06-11 14:30 → 2020-06-08 10:30 (-3d) | 2020-06-16 16:00 → 2020-06-08 11:00 (-8d) | 0.12d → 0.06d |  |  |
| 12 | **Estimativa preliminar de cronograma e orçcamento** | 2020-06-16 16:00 → 2020-06-08 11:00 (-8d) | 2020-06-17 17:30 → 2020-06-08 16:30 (-9d) | 1.19d → 0.56d |  |  |
| 13 | Elaborar cronograma e orçamento preliminares | 2020-06-16 16:00 → 2020-06-08 11:00 (-8d) | 2020-06-17 17:00 → 2020-06-08 16:00 (-9d) |  |  |  |
| 14 | Revisar cronograma e orçamento preliminares | 2020-06-17 17:00 → 2020-06-08 16:00 (-9d) | 2020-06-17 17:30 → 2020-06-08 16:30 (-9d) |  |  |  |
| 15 | **Análise** | 2020-06-17 17:30 → 2020-06-08 16:30 (-9d) | 2020-06-23 16:30 → 2020-06-12 15:30 (-11d) |  |  |  |
| 16 | **Documento de requisitos** | 2020-06-17 17:30 → 2020-06-08 16:30 (-9d) | 2020-06-23 16:30 → 2020-06-12 15:30 (-11d) |  |  |  |
| 17 | Reunir-se com o cliente | 2020-06-17 17:30 → 2020-06-08 16:30 (-9d) | 2020-06-18 11:30 → 2020-06-09 10:30 (-9d) |  |  |  |
| 18 | Elaborar documento de requisitos | 2020-06-18 11:30 → 2020-06-09 10:30 (-9d) | 2020-06-19 14:30 → 2020-06-10 13:30 (-9d) |  |  |  |
| 19 | Revisar documento de requisitos | 2020-06-22 16:30 → 2020-06-11 15:30 (-11d) | 2020-06-23 16:30 → 2020-06-12 15:30 (-11d) |  |  |  |
| 20 | Aprovar documento de requisitos | 2020-06-23 16:30 → 2020-06-12 15:30 (-11d) | 2020-06-23 16:30 → 2020-06-12 15:30 (-11d) |  |  |  |
| 21 | **MRB** | 2020-06-18 11:30 → 2020-06-09 10:30 (-9d) | 2020-06-23 13:30 → 2020-06-12 11:30 (-11d) |  |  |  |
| 22 | Elaborar MRB | 2020-06-18 11:30 → 2020-06-09 10:30 (-9d) | 2020-06-22 16:30 → 2020-06-11 15:30 (-11d) |  |  |  |
| 23 | Revisar MRB | 2020-06-22 16:30 → 2020-06-11 15:30 (-11d) | 2020-06-23 13:30 → 2020-06-12 11:30 (-11d) |  |  | constraint none → start no later than 2020-06-22 09:00 |
| 24 | **Projeto** | 2020-06-23 16:30 → 2020-06-12 15:30 (-11d) | 2020-06-24 15:15 → 2020-06-16 09:15 (-8d) | 0.84d → 1.34d |  |  |
| 25 | **Diagramas de classes** | 2020-06-23 16:30 → 2020-06-12 15:30 (-11d) | 2020-06-24 15:15 → 2020-06-15 17:45 (-9d) | 0.84d → 1.28d | 0d → 0.06d |  |
| 26 | Elaborar Diagrama de classes | 2020-06-23 16:30 → 2020-06-12 15:30 (-11d) | 2020-06-24 13:30 → 2020-06-15 17:00 (-9d) | 0.62d → 1d | 0d → 0.06d | resources Breno → Breno; Lucas |
| 27 | Revisar Diagrama de classes | 2020-06-24 13:30 → 2020-06-15 17:00 (-9d) | 2020-06-24 15:15 → 2020-06-15 17:45 (-9d) | 0.19d → 0.09d | 0d → 0.06d |  |
| 28 | Atualizar MRB | 2020-06-23 16:30 → 2020-06-12 15:30 (-11d) | 2020-06-24 10:00 → 2020-06-12 18:00 (-12d) |  | 0.53d → 1.03d | constraint none → start no later than 2020-06-22 09:00; resources Lucas → Douglas |
| 29 | **Modelo de entidade relacional** | 2020-06-23 16:30 → 2020-06-12 15:30 (-11d) | 2020-06-24 15:00 → 2020-06-16 09:15 (-8d) | 0.81d → 1.34d | 0.03d → 0d |  |
| 30 | Elaborar MER | 2020-06-23 16:30 → 2020-06-12 15:30 (-11d) | 2020-06-24 14:30 → 2020-06-15 13:30 (-9d) |  | 0.03d → 0d |  |
| 31 | Revisar MER | 2020-06-24 14:30 → 2020-06-15 17:45 (-9d) | 2020-06-24 15:00 → 2020-06-16 09:15 (-8d) |  | 0.03d → 0d | constraint none → start no later than 2020-06-23 09:00; resources Lucas; Breno → Lucas |
| 32 | **Planejamento** | 2020-06-24 15:15 → 2020-06-16 09:15 (-8d) | 2020-06-29 14:15 → 2020-06-18 14:15 (-11d) | 2.88d → 2.5d |  |  |
| 33 | Divisão dos times de desenvolvimento | 2020-06-25 14:15 → 2020-06-18 09:15 (-7d) | 2020-06-26 09:15 → 2020-06-18 14:15 (-8d) |  | 1.5d → 0d |  |
| 34 | Definir linguagem/frameworks a serem utilizados | 2020-06-24 15:15 → 2020-06-16 09:15 (-8d) | 2020-06-26 13:15 → 2020-06-16 14:15 (-10d) | 1.38d → 0.5d | 0d → 0.88d | constraint none → start no later than 2020-06-23 09:00; resources Breno; Douglas; Lucas → Breno; Douglas |
| 35 | **Definir padrão de interface e usabilidade** | 2020-06-26 13:15 → 2020-06-16 14:15 (-10d) | 2020-06-29 13:15 → 2020-06-17 14:15 (-12d) |  | 0d → 0.88d |  |
| 36 | Montar Mockup de interface | 2020-06-26 13:15 → 2020-06-16 14:15 (-10d) | 2020-06-29 10:15 → 2020-06-17 11:15 (-12d) |  | 0d → 0.88d |  |
| 37 | Reunir-se com o cliente | 2020-06-29 10:15 → 2020-06-17 11:15 (-12d) | 2020-06-29 13:15 → 2020-06-17 14:15 (-12d) |  | 0d → 0.88d |  |
| 38 | Aprovar Interface | 2020-06-29 13:15 → 2020-06-17 14:15 (-12d) | 2020-06-29 13:15 → 2020-06-17 14:15 (-12d) |  | 0d → 0.88d |  |
| 39 | Iniciar repositório para controle de versionamento | 2020-06-29 13:15 → 2020-06-17 14:15 (-12d) | 2020-06-29 14:15 → 2020-06-17 15:15 (-12d) |  | 0d → 0.88d |  |
| 40 | **Desenvolvimento** | 2020-06-29 14:15 → 2020-06-18 14:15 (-11d) | 2020-07-09 13:50 → 2020-07-03 15:35 (-6d) | 7.95d → 11.17d |  |  |
| 41 | **Release 00** | 2020-06-29 14:15 → 2020-06-18 14:15 (-11d) | 2020-07-06 16:15 → 2020-06-30 16:15 (-6d) | 5.25d → 8.25d |  |  |
| 42 | **Implementação** | 2020-06-29 14:15 → 2020-06-18 14:15 (-11d) | 2020-07-06 11:15 → 2020-06-29 15:15 (-7d) | 4.75d → 7.12d | 0d → 0.22d |  |
| 43 | Implementar [RFS01] | 2020-06-29 14:15 → 2020-06-19 10:15 (-10d) | 2020-06-30 16:15 → 2020-06-22 13:15 (-8d) |  | 0.22d → 0d |  |
| 44 | Implementar [RFS02] | 2020-06-30 16:15 → 2020-06-23 17:15 (-7d) | 2020-07-01 14:15 → 2020-06-24 15:15 (-7d) |  | 2.12d → 0.34d |  |
| 45 | Implementar [RFS03] | 2020-06-30 16:15 → 2020-06-24 15:15 (-6d) | 2020-07-01 13:15 → 2020-06-25 11:15 (-6d) |  | 2.25d → 0.72d |  |
| 46 | Implementar [RFS04] | 2020-07-02 11:15 → 2020-06-25 11:15 (-7d) | 2020-07-03 10:15 → 2020-06-25 16:15 (-8d) |  | 0.5d → 1.22d |  |
| 47 | Implementar [RFS05] | 2020-06-29 14:15 → 2020-06-18 14:15 (-11d) | 2020-06-30 16:15 → 2020-06-19 16:15 (-11d) |  | 2d → 0.22d |  |
| 48 | Implementar [RFS06] | 2020-06-30 16:15 → 2020-06-23 15:15 (-7d) | 2020-07-01 13:15 → 2020-06-24 11:15 (-7d) |  | 2.25d → 2.72d |  |
| 49 | Implementar [RFS07] | 2020-06-30 16:15 → 2020-06-24 11:15 (-6d) | 2020-07-01 13:15 → 2020-06-24 17:15 (-7d) |  | 2.25d → 2.09d |  |
| 50 | Implementar [RFS08] | 2020-06-30 16:15 → 2020-06-24 17:15 (-6d) | 2020-07-01 11:15 → 2020-06-25 13:15 (-6d) |  | 2.38d → 2.12d |  |
| 51 | Implementar [RFS09] | 2020-06-29 14:15 → 2020-06-18 14:15 (-11d) | 2020-06-30 16:15 → 2020-06-19 16:15 (-11d) |  | 0d → 0.22d |  |
| 52 | Implementar [RFS10] | 2020-06-30 16:15 → 2020-06-19 16:15 (-11d) | 2020-07-01 14:15 → 2020-06-24 10:15 (-7d) |  | 2.12d → 2.84d |  |
| 53 | Implementar [RFS11] | 2020-06-30 16:15 → 2020-06-24 10:15 (-6d) | 2020-07-01 13:15 → 2020-06-24 16:15 (-7d) |  | 2.25d → 2.62d |  |
| 54 | Implementar [RFS12] | 2020-06-30 16:15 → 2020-06-24 16:15 (-6d) | 2020-07-01 11:15 → 2020-06-25 11:15 (-6d) |  |  |  |
| 55 | Implementar [RFS13] | 2020-06-30 16:15 → 2020-06-22 13:15 (-8d) | 2020-07-02 09:15 → 2020-06-23 15:15 (-9d) |  | 0.97d → 0.22d |  |
| 56 | Implementar [RFS14] | 2020-07-02 09:15 → 2020-06-25 11:15 (-7d) | 2020-07-02 15:15 → 2020-06-25 17:15 (-7d) |  | 1d → 0.09d |  |
| 57 | Implementar [RFS15] | 2020-07-02 15:15 → 2020-06-25 17:15 (-7d) | 2020-07-03 11:15 → 2020-06-26 14:15 (-7d) |  | 0.38d → 0.47d |  |
| 58 | Implementar [RFS16] | 2020-07-02 09:15 → 2020-06-26 14:15 (-6d) | 2020-07-02 14:15 → 2020-06-29 09:15 (-3d) |  | 1.12d → 0.38d |  |
| 59 | Implementar [RFS17] | 2020-06-30 16:15 → 2020-06-22 13:15 (-8d) | 2020-07-02 11:15 → 2020-06-23 17:15 (-9d) |  | 1.38d → 0d |  |
| 60 | Implementar [RFS18] | 2020-06-30 16:15 → 2020-06-22 15:15 (-8d) | 2020-07-01 16:15 → 2020-06-23 15:15 (-8d) |  | 1.88d → 0.88d |  |
| 61 | Implementar [RNF01] | 2020-06-30 16:15 → 2020-06-19 16:15 (-11d) | 2020-07-01 15:15 → 2020-06-22 15:15 (-9d) |  | 2d → 4.78d |  |
| 62 | Implementar [RNF02] | 2020-07-03 15:15 → 2020-06-29 09:15 (-4d) | 2020-07-06 11:15 → 2020-06-29 15:15 (-7d) |  | 0d → 0.62d |  |
| 63 | Implementar [RNF03] | 2020-07-03 11:15 → 2020-06-23 15:15 (-10d) | 2020-07-03 15:15 → 2020-06-24 09:15 (-9d) |  | 0d → 2.97d |  |
| 64 | **Teste** | 2020-06-30 16:15 → 2020-06-25 13:15 (-5d) | 2020-07-06 16:15 → 2020-06-30 16:15 (-6d) | 4d → 3.38d |  |  |
| 65 | Testar [RFS01] | 2020-06-30 16:15 → 2020-06-29 09:15 (-1d) | 2020-07-01 09:15 → 2020-06-29 11:15 (-2d) |  | 3.75d → 1.5d |  |
| 66 | Testar [RFS02] | 2020-07-03 15:15 → 2020-06-30 11:15 (-3d) | 2020-07-03 17:15 → 2020-06-30 14:15 (-3d) |  | 0.88d → 0.25d |  |
| 67 | Testar [RFS03] | 2020-07-01 13:15 → 2020-06-29 14:15 (-2d) | 2020-07-01 15:15 → 2020-06-30 11:15 (-1d) |  | 3.12d → 0.5d |  |
| 68 | Testar [RFS04] | 2020-07-03 10:15 → 2020-06-29 11:15 (-4d) | 2020-07-03 13:15 → 2020-06-29 14:15 (-4d) |  | 1.38d → 1.25d |  |
| 69 | Testar [RFS05] | 2020-07-03 10:15 → 2020-06-25 16:15 (-8d) | 2020-07-03 13:15 → 2020-06-26 09:15 (-7d) |  | 1.38d → 2.75d |  |
| 70 | Testar [RFS06] | 2020-07-01 13:15 → 2020-06-26 15:15 (-5d) | 2020-07-01 15:15 → 2020-06-26 17:15 (-5d) |  | 3.12d → 1.88d |  |

| ID | Task | Start | Finish | Duration | Total float | Other |
| --- | --- | --- | --- | --- | --- | --- |
| 71 | Testar [RFS07] | 2020-07-01 13:15 → 2020-06-26 17:15 (-5d) | 2020-07-01 15:15 → 2020-06-29 10:15 (-2d) |  | 3.12d → 1.62d |  |
| 72 | Testar [RFS08] | 2020-07-01 11:15 → 2020-06-26 13:15 (-5d) | 2020-07-01 14:15 → 2020-06-26 15:15 (-5d) |  | 3.25d → 2.12d |  |
| 73 | Testar [RFS09] | 2020-06-30 16:15 → 2020-06-25 13:15 (-5d) | 2020-07-01 09:15 → 2020-06-25 15:15 (-6d) |  | 3.75d → 3.12d |  |
| 74 | Testar [RFS10] | 2020-07-01 16:15 → 2020-06-26 10:15 (-5d) | 2020-07-02 09:15 → 2020-06-26 13:15 (-6d) |  | 2.75d → 2.38d |  |
| 75 | Testar [RFS11] | 2020-07-01 13:15 → 2020-06-25 17:15 (-6d) | 2020-07-01 15:15 → 2020-06-26 10:15 (-5d) |  | 3.12d → 2.62d |  |
| 76 | Testar [RFS12] | 2020-07-01 11:15 → 2020-06-25 15:15 (-6d) | 2020-07-01 14:15 → 2020-06-25 17:15 (-6d) |  | 3.25d → 2.88d |  |
| 77 | Testar [RFS13] | 2020-07-02 09:15 → 2020-06-29 17:15 (-3d) | 2020-07-02 11:15 → 2020-06-30 10:15 (-2d) |  | 2.5d → 0.62d |  |
| 78 | Testar [RFS14] | 2020-07-02 15:15 → 2020-06-30 13:15 (-2d) | 2020-07-02 17:15 → 2020-06-30 15:15 (-2d) |  | 1.88d → 0.12d |  |
| 79 | Testar [RFS15] | 2020-07-03 11:15 → 2020-06-29 09:00 (-4d) | 2020-07-03 14:15 → 2020-06-30 16:00 (-3d) |  | 1.25d → 0.03d |  |
| 80 | Testar [RFS16] | 2020-07-02 14:15 → 2020-06-30 10:15 (-2d) | 2020-07-03 15:15 → 2020-06-30 13:15 (-3d) |  | 1.12d → 0.38d |  |
| 81 | Testar [RFS17] | 2020-07-02 11:15 → 2020-06-30 14:15 (-2d) | 2020-07-02 14:15 → 2020-06-30 16:15 (-2d) |  | 2.25d → 0d |  |
| 82 | Testar [RFS18] | 2020-07-01 16:15 → 2020-06-29 15:15 (-2d) | 2020-07-02 09:15 → 2020-06-29 17:15 (-3d) |  | 2.75d → 0.88d |  |
| 83 | Testar [RNF01] | 2020-07-01 15:15 → 2020-06-29 10:15 (-2d) | 2020-07-02 10:15 → 2020-06-30 14:00 (-2d) |  | 2.62d → 0.28d | constraint none → finish no earlier than 2020-06-30 14:00; resources Breno → Douglas |
| 84 | Testar [RNS02] | 2020-07-06 11:15 → 2020-06-29 15:15 (-7d) | 2020-07-06 16:15 → 2020-06-30 10:15 (-6d) |  | 0d → 0.62d |  |
| 85 | Testar [RNF03] | 2020-07-03 15:15 → 2020-06-26 09:15 (-7d) | 2020-07-06 09:15 → 2020-06-26 13:15 (-10d) |  | 0.75d → 2.38d |  |
| 86 | Avaliação do cliente | 2020-07-06 16:15 → 2020-06-30 16:15 (-6d) | 2020-07-06 16:15 → 2020-06-30 16:15 (-6d) |  |  |  |
| 87 | Redigir relatório de não-conformidade | 2020-07-06 16:15 → 2020-06-30 16:15 (-6d) | 2020-07-09 13:50 → 2020-07-03 15:35 (-6d) | 0.42d → 1.05d |  |  |
| 88 | **Release 01** | 2020-07-06 16:15 → 2020-06-30 16:15 (-6d) | 2020-07-09 11:15 → 2020-07-03 15:35 (-6d) | 2.5d → 2.92d | 0.2d → 0d |  |
| 89 | **Implementação** | 2020-07-06 16:15 → 2020-06-30 16:15 (-6d) | 2020-07-08 16:55 → 2020-07-02 16:55 (-6d) |  | 0.2d → 0d |  |
| 90 | Correção de bugs de acordo com o relatório de não conformidade da Release 00 | 2020-07-06 16:15 → 2020-06-30 16:15 (-6d) | 2020-07-08 16:55 → 2020-07-02 16:55 (-6d) |  | 0.2d → 0d | resources Breno; Lucas; Douglas → Lucas; Douglas |
| 91 | **Teste** | 2020-07-08 16:55 → 2020-07-02 16:55 (-6d) | 2020-07-09 11:15 → 2020-07-03 15:35 (-6d) | 0.42d → 0.83d | 0.2d → 0d |  |
| 92 | Validação da correção dos bugs | 2020-07-08 16:55 → 2020-07-02 16:55 (-6d) | 2020-07-09 11:15 → 2020-07-03 15:35 (-6d) | 0.42d → 0.83d | 0.2d → 0d |  |
| 93 | **Monitoramento e controle** | 2020-06-24 15:15 → 2020-06-16 09:15 (-8d) | 2020-06-25 17:15 → 2020-06-19 10:15 (-6d) | 1.25d → 3.12d | 3.57d → 4.54d |  |
| 94 | Acompanhamento do projeto | 2020-06-24 15:15 → 2020-06-16 14:15 (-8d) | 2020-06-25 09:15 → 2020-06-18 09:15 (-7d) | 0.38d → 0.75d | 4.45d → 4.47d | constraint none → start no later than 2020-06-23 09:00; resources Breno → Breno; Douglas |
| 95 | Atualizações de bibliotecas utilizadas e protocolos | 2020-06-24 15:15 → 2020-06-16 09:15 (-8d) | 2020-06-25 14:15 → 2020-06-16 17:15 (-9d) |  | 3.95d → 6.79d |  |
| 96 | Elucidar requisitos demandados pelo cliente em relases | 2020-06-24 15:15 → 2020-06-18 14:15 (-6d) | 2020-06-25 11:15 → 2020-06-19 10:15 (-6d) |  | 4.2d → 4.54d |  |
| 97 | Refatoração de código | 2020-06-24 15:15 → 2020-06-16 17:15 (-8d) | 2020-06-25 17:15 → 2020-06-18 10:15 (-7d) |  | 3.57d → 5.54d |  |
| 98 | Fechamento | 2020-06-25 17:15 → 2020-06-19 10:15 (-6d) | 2020-06-29 17:15 → 2020-06-23 10:15 (-6d) |  | 3.57d → 4.54d |  |
| 99 | Controle de mudanças | 2020-06-29 17:15 → 2020-06-23 10:15 (-6d) | 2020-07-03 17:15 → 2020-06-29 10:15 (-4d) |  | 3.57d → 4.54d |  |
